# 指标管理系统工作计划

Schedule from MS Project, 2020-05-25 to 2020-06-30, A marks actual dates.

## Calendars

- 标准: Mon-Fri 08:00-12:00, 13:00-17:00; Sat-Sun off.

## Resources

| Resource |
| --- |
| 魏亚远 |
| 肖燏 |
| 宋超群 |
| 戴桂春 |
| 郑良骢 |

## Schedule

| ID | WBS | Task | Type | Duration | Start | Finish | Predecessors | Complete | Remaining | Total slack | Free slack | Constraint | Resources | Work | Actual work |
| --- | --- | --- | --- | --- | --- | --- | --- | --- | --- | --- | --- | --- | --- | --- | --- |
| 1 | 1 | Web应用技术架构选型 |  | 2d | 2020-05-26 | 2020-05-27 |  |  |  | 22d | 0d | start no earlier than 2020-05-26 | 魏亚远; 宋超群 | 24h |  |
| 2 | 2 | 确定前端页面样式规范 | manual | 1d? | 2020-05-25 | 2020-05-25 |  |  |  |  |  | finish no earlier than 2020-05-28 |  |  |  |
| 3 | 3 | 完成物理数据模型 |  | 2d | 2020-05-26 A | 2020-05-27 A |  | 100% |  |  |  | start no earlier than 2020-05-26 | 肖燏 | 16h | 16h |
| 4 | 4 | 搭建Web应用开发环境 |  | 2d? | 2020-05-28 | 2020-05-29 | 1 |  |  | 22d |  | start no earlier than 2020-05-28 | 魏亚远 | 16h |  |
| 5 | 5 | **Web应用页面原型** |  | 6d? | 2020-05-28 A | 2020-06-04 |  | 42% | 3.5d? |  |  |  |  | 472h | 120h |
| 6 | 5.1 | 数据查询分析 |  | 5d | 2020-05-28 A | 2020-06-03 A |  | 100% |  |  |  |  | 肖燏 | 40h | 40h |
| 7 | 5.2 | 指标体系管理 |  | 5d | 2020-05-28 A | 2020-06-03 A |  | 100% |  |  |  |  | 肖燏 | 40h | 40h |
| 8 | 5.3 | 数据权限管理 |  | 5d | 2020-05-28 | 2020-06-03 |  |  |  | 18d | 0d |  | 宋超群 | 40h |  |
| 9 | 5.4 | 数据接口管理 |  | 5d | 2020-05-28 | 2020-06-03 |  |  |  | 18d | 0d |  | 宋超群 | 40h |  |
| 10 | 5.5 | 系统管理 |  | 5d | 2020-05-28 A | 2020-06-03 A |  | 100% |  |  |  |  | 肖燏 | 40h | 40h |
| 11 | 5.6 | 原型评审（第一轮） |  | 1d | 2020-06-04 | 2020-06-04 | 6, 7, 8, 9, 10 |  |  | 18d |  |  | 宋超群; 戴桂春; 肖燏; 魏亚远 | 32h |  |
| 12 | 5.7 | **Web应用原型开发** |  | 3d? | 2020-06-04 | 2020-06-08 |  |  |  |  |  |  |  | 240h |  |
| 13 | 5.7.1 | 首页和菜单框架 |  | 3d | 2020-06-04 | 2020-06-08 |  |  |  | 16d |  |  | 魏亚远 | 24h |  |
| 14 | 5.7.2 | 指标目录树展现和操作 |  | 2d | 2020-06-04 | 2020-06-05 |  |  |  | 17d |  |  | 魏亚远 | 16h |  |
| 15 | 5.7.3 | 指标查询分析 | manual | 1d | 2020-06-04 | 2020-06-04 |  |  |  |  |  |  | 宋超群 | 8h |  |
| 16 | 5.7.4 | **指标仪表盘** |  | 19d | 2020-06-04 | 2020-06-30 |  |  |  |  |  |  | 郑良骢 | 192h |  |
| 17 | 5.7.4.1 | 指标仪表盘实现方案设计 |  | 5d | 2020-06-04 | 2020-06-10 |  |  |  | 14d |  | start no earlier than 2020-06-04 | 郑良骢 | 40h |  |
| 18 | 5.7.4.2 | 指标仪表盘展现 | manual | 1d? | 2020-06-04 | 2020-06-04 |  |  |  |  |  |  |  |  |  |
| 19 | 5.7.4.3 | 指标仪表盘设置 | manual | 1d? | 2020-06-04 | 2020-06-04 |  |  |  |  |  |  |  |  |  |
| 20 | 5.7.4.4 | 指标图表设计 | manual | 1d? | 2020-06-04 | 2020-06-04 |  |  |  |  |  |  |  |  |  |
| 21 | 5.7.4.5 | 指标图表浏览/管理 | manual | 1d? | 2020-06-04 | 2020-06-04 |  |  |  |  |  |  |  |  |  |

Notes:
- 2: 参照数研Web界面规范
